# ARAquá - Avaliação de Risco Ambiental de Agrotóxico

Schedule from GanttProject, 2018-10-08 to 2018-12-04.
Faculdade Eduvale de Avaré
http://www.cnpm.embrapa.br
Holidays every year on 01-01, 04-21, 05-01, 09-07, 10-12, 11-02, 11-15, 12-25

## Calendars

- Project calendar: Mon-Fri working; Sat-Sun off.

## Resources

| Resource | Group | Rate |
| --- | --- | --- |
| Alessandro Jonas Vieira | Programador | 262.25 |
| Emerson Aparecido de Paula | Administrador de Banco de Dados | 345.44 |
| Guilherme Dal Santos | Analista de Negócios | 160 |
| Matheus Prezotto | Projetista de UI | 200 |
| Carlos Henrique Berni | Analista de Requisitos | 189.45 |
| Maria Paula | Engenheiro de Requisitos | 179.95 |
| Fernando Michelin | Analista de Requisitos | 179.95 |
| Thomas Rafael | Analista de Requisitos | 179.95 |
| Marcos Molitor |  | 330.18 |
| Leonardo Salles | Supervisor de Projetos | 168.34 |
| Rodolfo Dias | Supervisor de Implantação | 168.34 |
| Weliton Dantas | Supervisor de Análise de Riscos | 168.34 |
| Davi Evangelista | Analista de Sistemas | 262.25 |
| Graciely Rocha | Diagramador | 377.56 |
| Gabriel Moreli | Diagramador | 377.77 |
| Hanna Karolyn |  | 244.46 |
| Julio Cesar Ramos |  | 176.49 |

## Schedule

| ID | WBS | Task | Type | Duration | Start | Finish | Complete | Resources | Cost |
| --- | --- | --- | --- | --- | --- | --- | --- | --- | --- |
| 1 | 1 | **ARAquá modulo 2** |  | 39d | 2018-10-08 | 2018-12-04 | 40% |  |  |
| 2 | 1.1 | **Comunicação** |  | 33d | 2018-10-08 | 2018-11-26 | 12% |  |  |
| 3 | 1.1.1 | Reunião com o Cliente |  | 1d | 2018-10-08 | 2018-10-08 | 100% | Maria Paula |  |
| 4 | 1.1.2 | Reunião com Equipe de Projetos |  | 1d | 2018-10-09 | 2018-10-09 | 100% | Marcos Molitor; Davi Evangelista |  |
| 5 | 1.1.3 | Levantamento Inicial de Requisitos |  | 4d | 2018-10-09 | 2018-10-15 | 100% | Carlos Henrique Berni; Fernando Michelin; Thomas Rafael |  |
| 6 | 1.1.4 | Especificação de Requisitos de Software |  | 3d | 2018-10-10 | 2018-10-15 | 100% | Maria Paula |  |
| 7 | 1.1.5 | Requisitos de Sistema e Não Funcionais |  | 4d | 2018-10-15 | 2018-10-18 | 100% | Maria Paula |  |
| 8 | 1.1.6 | **Feedback de Versões** |  | 28d | 2018-10-16 | 2018-11-26 |  |  |  |
| 9 | 1.1.6.1 | Feedback da versão Protótipo |  | 1d | 2018-10-16 | 2018-10-16 |  | Maria Paula |  |
| 10 | 1.1.6.2 | Feedback da versão Pré-Alpha | milestone | 0d | 2018-10-23 | 2018-10-23 |  | Maria Paula | 179.95 |
| 11 | 1.1.6.3 | Feedback da versão Alpha |  | 1d | 2018-10-30 | 2018-10-30 |  | Maria Paula |  |
| 12 | 1.1.6.4 | Feedback da versão Beta |  | 1d | 2018-11-05 | 2018-11-05 |  | Maria Paula |  |
| 13 | 1.1.6.5 | Feedback da versão Release Candidate |  | 1d | 2018-11-12 | 2018-11-12 |  | Maria Paula | 179.95 |
| 14 | 1.1.6.6 | Feedback da versão RTM |  | 1d | 2018-11-19 | 2018-11-19 |  | Maria Paula | 179.95 |
| 15 | 1.1.6.7 | Feedback da versão GA |  | 1d | 2018-11-26 | 2018-11-26 |  | Maria Paula | 179.95 |
| 16 | 1.1.7 | Incrementos de Requisitos |  | 29d | 2018-10-15 | 2018-11-26 |  | Thomas Rafael |  |
| 17 | 1.1.8 | Manual de Software e Documentação |  | 29d | 2018-10-15 | 2018-11-26 | 20% | Thomas Rafael | 5,218.55 |
| 18 | 1.1.9 | Treinamento Cliente e Suporte |  | 29d | 2018-10-15 | 2018-11-26 |  | Carlos Henrique Berni |  |
| 19 | 1.1.10 | **Revisão Requisitos** |  | 23d | 2018-10-22 | 2018-11-23 |  |  |  |
| 20 | 1.1.10.1 | Revisão Protótipo |  | 4d | 2018-10-22 | 2018-10-25 |  | Maria Paula |  |
| 21 | 1.1.10.2 | Revisão Pré-Alpha |  | 3d | 2018-10-29 | 2018-10-31 |  | Maria Paula |  |
| 22 | 1.1.10.3 | Revisão Alpha |  | 4d | 2018-11-05 | 2018-11-08 |  | Maria Paula |  |
| 23 | 1.1.10.4 | Revisão Beta |  | 4d | 2018-11-12 | 2018-11-16 |  | Maria Paula | 719.8 |
| 24 | 1.1.10.5 | Revisão Release Candidate |  | 1d | 2018-11-19 | 2018-11-19 |  | Maria Paula |  |
| 25 | 1.1.10.6 | Revisão RTM |  | 1d | 2018-11-21 | 2018-11-21 |  | Maria Paula |  |
| 26 | 1.1.10.7 | Revisão GA |  | 1d | 2018-11-23 | 2018-11-23 |  | Maria Paula | 330.18 |

| ID | WBS | Task | Duration | Start | Finish | Complete | Resources | Cost |
| --- | --- | --- | --- | --- | --- | --- | --- | --- |
| 27 | 1.2 | **Planejamento** | 35d | 2018-10-09 | 2018-11-29 | 71% |  |  |
| 28 | 1.2.1 | **Gerenciamento de Risco** | 33d | 2018-10-09 | 2018-11-27 | 100% |  |  |
| 29 | 1.2.1.1 | Levantamento de Risco | 33d | 2018-10-09 | 2018-11-27 | 100% | Weliton Dantas | 5,555.22 |
| 30 | 1.2.1.2 | Revisão do Gerenciamento de Risco | 5d | 2018-10-19 | 2018-10-25 | 100% | Marcos Molitor | 1,650.9 |
| 31 | 1.2.2 | Supervisão de Atividades das Áreas | 33d | 2018-10-09 | 2018-11-27 | 60% | Leonardo Salles |  |
| 32 | 1.2.3 | Gestão de Qualidade do Software | 33d | 2018-10-09 | 2018-11-27 | 60% | Rodolfo Dias |  |
| 33 | 1.2.4 | Construção do Cronograma | 1d | 2018-10-10 | 2018-10-10 | 100% | Marcos Molitor |  |
| 34 | 1.2.5 | **Revisão do Cronograma** | 19d | 2018-10-15 | 2018-11-09 | 54% |  |  |
| 35 | 1.2.5.1 | Acompanhamento Requisitos | 5d | 2018-10-15 | 2018-10-19 | 90% | Marcos Molitor |  |
| 36 | 1.2.5.2 | Acompanhamento Modelagem | 5d | 2018-10-22 | 2018-10-26 | 70% | Marcos Molitor |  |
| 37 | 1.2.5.3 | Acompanhamento Desenvolvimento | 4d | 2018-10-29 | 2018-11-01 | 20% | Marcos Molitor |  |
| 38 | 1.2.5.4 | Acompanhamento Emprego | 5d | 2018-11-05 | 2018-11-09 | 30% | Marcos Molitor |  |
| 39 | 1.2.6 | Apuração de Custos | 5d | 2018-10-15 | 2018-10-19 | 100% | Marcos Molitor |  |
| 40 | 1.2.7 | Revisão Documentação e Repositório | 1d | 2018-11-29 | 2018-11-29 | 50% | Marcos Molitor |  |
| 41 | 1.3 | **Modelagem** | 36d | 2018-10-09 | 2018-11-30 | 78% |  |  |
| 42 | 1.3.1 | Definição de Ferramentas e Padrões | 1d | 2018-10-09 | 2018-10-09 | 100% | Davi Evangelista; Graciely Rocha |  |
| 43 | 1.3.2 | Modelo Entidade Relacionamento | 8d | 2018-10-10 | 2018-10-22 | 100% | Davi Evangelista; Graciely Rocha; Gabriel Moreli |  |
| 44 | 1.3.3 | Diagrama de Caso de Uso | 5d | 2018-10-22 | 2018-10-26 | 100% | Davi Evangelista; Graciely Rocha; Gabriel Moreli |  |
| 45 | 1.3.4 | Diagrama de Atividades | 4d | 2018-11-05 | 2018-11-08 | 100% | Davi Evangelista; Graciely Rocha; Gabriel Moreli |  |
| 46 | 1.3.5 | Diagrama de Sequência | 5d | 2018-11-12 | 2018-11-19 |  | Davi Evangelista; Graciely Rocha; Gabriel Moreli |  |
| 47 | 1.3.6 | Diagrama de Classes | 5d | 2018-11-19 | 2018-11-23 | 100% | Davi Evangelista; Graciely Rocha; Gabriel Moreli |  |
| 48 | 1.3.7 | Revisão Modelos e Diagramas | 5d | 2018-11-26 | 2018-11-30 | 60% | Davi Evangelista; Graciely Rocha; Gabriel Moreli |  |
| 49 | 1.4 | **Desenvolvimento** | 38d | 2018-10-09 | 2018-12-04 | 40% |  |  |
| 50 | 1.4.1 | Design de Telas e Formulários | 33d | 2018-10-09 | 2018-11-27 | 100% | Alessandro Jonas Vieira |  |
| 51 | 1.4.2 | Teste unitário e de integração | 33d | 2018-10-09 | 2018-11-27 |  | Alessandro Jonas Vieira; Matheus Prezotto |  |
| 52 | 1.4.3 | Design de Experiência de Uso | 33d | 2018-10-09 | 2018-11-27 | 100% | Matheus Prezotto |  |
| 53 | 1.4.4 | Analise de Regras de Negócio | 23d | 2018-10-10 | 2018-11-13 |  | Guilherme Dal Santos |  |
| 54 | 1.4.5 | Construção da versão Protótipo | 3d | 2018-10-15 | 2018-10-17 | 10% | Davi Evangelista |  |
| 55 | 1.4.6 | Modelo Físico | 5d | 2018-10-15 | 2018-10-19 | 80% | Emerson Aparecido de Paula |  |
| 56 | 1.4.7 | Construção da versão Pré-Alpha | 4d | 2018-10-16 | 2018-10-19 | 10% | Alessandro Jonas Vieira |  |
| 57 | 1.4.8 | Performance e Administração do Banco | 19d | 2018-10-22 | 2018-11-19 | 10% | Emerson Aparecido de Paula |  |
| 58 | 1.4.9 | Construção da versão Alpha | 4d | 2018-10-23 | 2018-10-26 | 10% | Alessandro Jonas Vieira |  |
| 59 | 1.4.10 | Construção da versão Beta | 3d | 2018-11-05 | 2018-11-07 | 10% | Alessandro Jonas Vieira |  |
| 60 | 1.4.11 | Construção da versão Release Candidate | 4d | 2018-11-06 | 2018-11-09 | 10% | Alessandro Jonas Vieira |  |
| 61 | 1.4.12 | Revisão Código | 10d | 2018-11-13 | 2018-11-27 | 10% | Guilherme Dal Santos |  |
| 62 | 1.4.13 | Construção da versão RTM | 3d | 2018-11-20 | 2018-11-22 | 10% | Davi Evangelista |  |
| 63 | 1.4.14 | Contrução da versão GA | 4d | 2018-11-21 | 2018-11-26 | 10% | Davi Evangelista |  |
| 64 | 1.4.15 | Rotinas de Backup | 5d | 2018-11-28 | 2018-12-04 |  | Emerson Aparecido de Paula |  |

Notes:
- 39: Custo Total do Projeto R$ 157.232,70
- 42: https://github.com/alessandrojv/ARAqua/wiki/LinksFerramentas
- 53: Não foi gerado artefatos! E não teve manifestação no Grupo.
- 64: Não foi gerado artefatos! E não teve manifestação no Grupo.

| ID | WBS | Task | Duration | Start | Finish | Complete | Resources |
| --- | --- | --- | --- | --- | --- | --- | --- |
| 65 | 1.5 | **Emprego** | 37d | 2018-10-09 | 2018-12-03 |  |  |
| 66 | 1.5.1 | Preparação de Ambiente no Cliente | 2d | 2018-10-09 | 2018-10-10 |  | Emerson Aparecido de Paula |
| 67 | 1.5.2 | Instalação do Banco de Dados | 2d | 2018-10-11 | 2018-10-15 |  | Emerson Aparecido de Paula |
| 68 | 1.5.3 | Liberação da versão Protótipo | 1d | 2018-10-15 | 2018-10-15 |  | Alessandro Jonas Vieira |
| 69 | 1.5.4 | Liberação da versão Pré-Alpha | 1d | 2018-10-22 | 2018-10-22 |  | Alessandro Jonas Vieira |
| 70 | 1.5.5 | Liberação da versão Alpha | 1d | 2018-11-05 | 2018-11-05 |  | Alessandro Jonas Vieira |
| 71 | 1.5.6 | Liberação da versão Beta | 1d | 2018-11-12 | 2018-11-12 |  | Alessandro Jonas Vieira |
| 72 | 1.5.7 | Liberação da versão Release Candidate | 1d | 2018-11-19 | 2018-11-19 |  | Alessandro Jonas Vieira |
| 73 | 1.5.8 | Liberação da versão RTM | 1d | 2018-11-23 | 2018-11-23 |  | Alessandro Jonas Vieira |
| 74 | 1.5.9 | Liberação da versão GA | 1d | 2018-11-30 | 2018-11-30 |  | Alessandro Jonas Vieira |
| 75 | 1.5.10 | Homologação e Apresentação | 1d | 2018-12-03 | 2018-12-03 |  | Alessandro Jonas Vieira; Emerson Aparecido de Paula; Guilherme Dal Santos; Matheus Prezotto; Carlos Henrique Berni; Maria Paula; Fernando Michelin; Thomas Rafael; Marcos Molitor; Leonardo Salles; Weliton Dantas; Davi Evangelista; Graciely Rocha; Gabriel Moreli; Hanna Karolyn; Julio Cesar Ramos |
| 76 | 2 | Standby | 1d | 2018-10-08 | 2018-10-08 | 100% | Emerson Aparecido de Paula; Guilherme Dal Santos; Matheus Prezotto; Carlos Henrique Berni; Fernando Michelin; Thomas Rafael; Leonardo Salles; Rodolfo Dias; Weliton Dantas; Graciely Rocha; Gabriel Moreli; Hanna Karolyn; Julio Cesar Ramos |

Notes:
- 66: Verificar com o cliente como será instalado.
